# Календарный план внедрения 1С:ERP + Управление холдингом

How a schedule from MS Project changed from version to version. A marks actual dates.

## Version 1 (saved 2026-06-18)

Note of the change: Documents 1-5 phases

| ID | WBS | Task | Duration | Start | Finish | Predecessors | Total float | Constraint |
| --- | --- | --- | --- | --- | --- | --- | --- | --- |
| 1 |  | Старт проекта | 0d | 2026-07-01 | 2026-07-01 |  | -477d | start no earlier than 2026-07-01 |
| 2 | 2 | **Фаза 1. Инициация и подготовка** | 15d | 2026-07-01 | 2026-07-21 |  | -477d |  |
| 3 |  | Разработка и утверждение Устава | 10d | 2026-07-01 | 2026-07-14 | 1 | -477d |  |
| 4 |  | Мобилизация команды, оргструктура | 5d | 2026-07-01 | 2026-07-07 | 1 | -467d |  |
| 5 |  | Закрепление экспертов Заказчика (приказ) | 5d | 2026-07-15 | 2026-07-21 | 3 | -477d |  |
| 6 |  | Веха: проект инициирован | 0d | 2026-07-21 | 2026-07-21 | 3, 4, 5 | -477d |  |
| 7 | 3 | **Фаза 2. Обследование** | 25d | 2025-07-28 | 2025-09-01 |  | -220d |  |
| 8 |  | Сбор и анализ требований (воркшопы) | 25d | 2025-07-28 | 2025-09-01 | 6 | -257d | finish no later than 2025-09-01 |
| 9 |  | Описание процессов As-Is / To-Be | 20d | 2025-08-04 | 2025-09-01 | 6 | -252d | finish no later than 2025-09-01 |
| 10 |  | Gap-анализ относительно типового 1С | 10d | 2025-08-18 | 2025-09-01 | 8 | -210d | finish no later than 2025-09-01 |
| 11 |  | Реестр требований + RTM (базовая линия) | 8d | 2025-08-20 | 2025-09-01 | 8 | -210d | finish no later than 2025-09-01 |
| 12 |  | Веха: обследование завершено | 0d | 2025-09-01 | 2025-09-01 | 9, 10, 11 | -210d |  |
| 13 | 4 | **Фаза 3. Проектирование** | 25d | 2025-07-28 | 2025-09-01 |  | -185d |  |
| 14 |  | Концепция архитектуры решения | 15d | 2025-08-11 | 2025-09-01 | 12 | -195d | finish no later than 2025-09-01 |
| 15 |  | Концепция НСИ / мастер-данных | 15d | 2025-08-11 | 2025-09-01 | 12 | -170d | finish no later than 2025-09-01 |
| 16 |  | Концепция миграции данных | 15d | 2025-08-11 | 2025-09-01 | 12 | -170d | finish no later than 2025-09-01 |
| 17 |  | Концепция интеграции (ландшафт) | 12d | 2025-08-14 | 2025-09-01 | 12 | -195d | finish no later than 2025-09-01 |
| 18 |  | Разработка ЧТЗ на подсистемы | 25d | 2025-07-28 | 2025-09-01 | 14 | -170d | finish no later than 2025-09-01 |
| 19 |  | Разработка ЧТЗ на интеграции | 25d | 2025-07-28 | 2025-09-01 | 17 | -170d | finish no later than 2025-09-01 |
| 20 |  | Веха: проектные решения утверждены | 0d | 2025-09-01 | 2025-09-01 | 15, 16, 18, 19 | -170d |  |
| 21 | 5 | **Фаза 4. Разработка и настройка** | 40d | 2025-07-07 | 2025-09-01 |  | -130d |  |
| 22 |  | Настройка типового функционала (волна 1) | 30d | 2025-07-21 | 2025-09-01 | 20 | -130d | finish no later than 2025-09-01 |
| 23 |  | Доработки конфигурации (волна 1) | 35d | 2025-07-14 | 2025-09-01 | 20 | -130d | finish no later than 2025-09-01 |
| 24 |  | Разработка интеграций | 40d | 2025-07-07 | 2025-09-01 | 20 | -130d | finish no later than 2025-09-01 |
| 25 |  | Настройка и ведение НСИ | 30d | 2025-07-21 | 2025-09-01 | 20 | -30d | finish no later than 2025-09-01 |
| 26 |  | Разработка сценариев миграции | 25d | 2025-07-28 | 2025-08-29 | 20 | -110d | start no later than 2025-07-28 |
| 27 |  | Веха: функционал готов к тестированию | 0d | 2025-09-01 | 2025-09-01 | 22, 23, 24 | -130d |  |
| 28 | 6 | **Фаза 5. Тестирование** | 20d | 2025-08-04 | 2025-09-01 |  | -125d |  |
| 29 |  | Разработка ПМИ и тест-кейсов | 15d | 2025-08-11 | 2025-09-01 | 20 | -130d | finish no later than 2025-09-01 |
| 30 |  | Функциональное тестирование | 20d | 2025-08-04 | 2025-09-01 | 27, 29 | -110d | finish no later than 2025-09-01 |
| 31 |  | Интеграционное тестирование | 15d | 2025-08-11 | 2025-09-01 | 27, 29 | -110d | finish no later than 2025-09-01 |
| 32 |  | Нагрузочное тестирование | 10d | 2025-08-18 | 2025-09-01 | 30 | -95d | finish no later than 2025-09-01 |
| 33 |  | Пробные миграции + сверка данных | 15d | 2025-08-11 | 2025-09-01 | 26, 27 | -95d | finish no later than 2025-09-01 |
| 34 |  | Исправление дефектов | 15d | 2025-08-11 | 2025-09-01 | 30, 31 | -95d | finish no later than 2025-09-01 |
| 35 |  | Веха: испытания пройдены | 0d | 2025-09-01 | 2025-09-01 | 32, 33, 34 | -95d |  |
| 36 | 7 | **Фаза 6. Обучение и опытная эксплуатация** | 30d | 2025-07-21 | 2025-09-01 |  | -80d |  |
| 37 |  | Подготовка учебных материалов | 15d | 2025-08-11 | 2025-09-01 | 27 | -95d | finish no later than 2025-09-01 |
| 38 |  | Обучение пользователей | 20d | 2025-08-04 | 2025-09-01 | 35, 37 | -75d | finish no later than 2025-09-01 |
| 39 |  | Промышленная миграция данных | 7d | 2025-08-21 | 2025-09-01 | 35 | -75d | finish no later than 2025-09-01 |
| 40 |  | Опытно-промышленная эксплуатация (ОПЭ) | 30d | 2025-07-21 | 2025-09-01 | 38, 39 | -45d | finish no later than 2025-09-01 |
| 41 |  | Доработки по итогам ОПЭ | 15d | 2025-08-11 | 2025-09-01 | 40 | -30d | finish no later than 2025-09-01 |
| 42 |  | Веха: система готова к ПЭ | 0d | 2025-09-01 | 2025-09-01 | 41 | -30d |  |
| 43 | 8 | **Фаза 7. Промышленная эксплуатация и закрытие** | 20d | 2025-08-04 | 2025-09-01 |  | -10d |  |
| 44 |  | Перевод в промышленную эксплуатацию | 5d | 2025-08-25 | 2025-09-01 | 42 | -25d | finish no later than 2025-09-01 |
| 45 |  | Стабилизация (Hypercare) | 20d | 2025-08-04 | 2025-09-01 | 44 | -20d | finish no later than 2025-09-01 |
| 46 |  | Подготовка эксплуатационной документации | 15d | 2025-08-11 | 2025-09-01 | 42 | -15d | finish no later than 2025-09-01 |
| 47 |  | Извлечённые уроки, закрытие проекта | 5d | 2025-08-25 | 2025-09-01 | 45, 46 | -5d | finish no later than 2025-09-01 |
| 48 |  | Веха: проект завершён | 0d | 2025-09-01 | 2025-09-01 | 47 | 232d |  |

## Version 2 (saved 2026-06-28)

Note of the change: Changed issue connections

Last finish 2026-07-21 → 2028-02-22 (+581d).

Changed:

| ID | Task | Start | Finish | Duration | Total float | Predecessors | Other |
| --- | --- | --- | --- | --- | --- | --- | --- |
| 2 | **Фаза 1. Инициация и подготовка** |  | 2026-07-21 → 2026-07-28 (+7d) | 15d → 20d | -477d → 0d |  |  |
| 4 | Мобилизация команды, оргструктура | 2026-07-01 → 2026-07-15 (+14d) | 2026-07-07 → 2026-07-21 (+14d) |  | -467d → 0d | 1 → 3 |  |
| 5 | Закрепление экспертов Заказчика (приказ) | 2026-07-15 → 2026-07-22 (+7d) | 2026-07-21 → 2026-07-28 (+7d) |  | -477d → 0d | 3 → 4 |  |
| 6 | Веха: проект инициирован | 2026-07-21 → 2026-07-28 (+7d) | 2026-07-21 → 2026-07-28 (+7d) |  | -477d → -552d |  |  |
| 7 | **Фаза 2. Обследование** | 2025-07-28 → 2026-07-29 (+366d) | 2025-09-01 → 2026-10-23 (+417d) | 25d → 63d | -220d → 0d |  |  |
| 8 | Сбор и анализ требований (воркшопы) | 2025-07-28 → 2026-07-29 (+366d) | 2025-09-01 → 2026-09-01 (+365d) |  | -257d → 0d |  | constraint finish no later than 2025-09-01 → none |
| 9 | Описание процессов As-Is / To-Be | 2025-08-04 → 2026-09-02 (+394d) | 2025-09-01 → 2026-09-29 (+393d) |  | -252d → 0d | 6 → 8 | constraint finish no later than 2025-09-01 → none |
| 10 | Gap-анализ относительно типового 1С | 2025-08-18 → 2026-09-30 (+408d) | 2025-09-01 → 2026-10-13 (+407d) |  | -210d → 0d | 8 → 9 | constraint finish no later than 2025-09-01 → none |
| 11 | Реестр требований + RTM (базовая линия) | 2025-08-20 → 2026-10-14 (+420d) | 2025-09-01 → 2026-10-23 (+417d) |  | -210d → 0d | 8 → 10 | constraint finish no later than 2025-09-01 → none |
| 12 | Веха: обследование завершено | 2025-09-01 → 2026-10-23 (+417d) | 2025-09-01 → 2026-10-23 (+417d) |  | -210d → -552d |  |  |
| 13 | **Фаза 3. Проектирование** | 2025-07-28 → 2026-10-26 (+455d) | 2025-09-01 → 2027-02-16 (+533d) | 25d → 82d | -185d → 0d |  |  |
| 14 | Концепция архитектуры решения | 2025-08-11 → 2026-10-26 (+441d) | 2025-09-01 → 2026-11-13 (+438d) |  | -195d → 0d |  | constraint finish no later than 2025-09-01 → none |
| 15 | Концепция НСИ / мастер-данных | 2025-08-11 → 2026-11-16 (+462d) | 2025-09-01 → 2026-12-04 (+459d) |  | -170d → 0d | 12 → 14 | constraint finish no later than 2025-09-01 → none |
| 16 | Концепция миграции данных | 2025-08-11 → 2026-12-07 (+483d) | 2025-09-01 → 2026-12-25 (+480d) |  | -170d → 0d | 12 → 15 | constraint finish no later than 2025-09-01 → none |
| 17 | Концепция интеграции (ландшафт) | 2025-08-14 → 2026-12-28 (+501d) | 2025-09-01 → 2027-01-12 (+498d) |  | -195d → 0d | 12 → 16 | constraint finish no later than 2025-09-01 → none |
| 18 | Разработка ЧТЗ на подсистемы | 2025-07-28 → 2026-11-16 (+476d) | 2025-09-01 → 2026-12-18 (+473d) |  | -170d → 42d |  | constraint finish no later than 2025-09-01 → none |
| 19 | Разработка ЧТЗ на интеграции | 2025-07-28 → 2027-01-13 (+534d) | 2025-09-01 → 2027-02-16 (+533d) |  | -170d → 0d |  | constraint finish no later than 2025-09-01 → none |
| 20 | Веха: проектные решения утверждены | 2025-09-01 → 2027-02-16 (+533d) | 2025-09-01 → 2027-02-16 (+533d) |  | -170d → -552d |  |  |
| 21 | **Фаза 4. Разработка и настройка** | 2025-07-07 → 2027-02-17 (+590d) | 2025-09-01 → 2027-07-13 (+680d) | 40d → 105d | -130d → 0d |  |  |
| 22 | Настройка типового функционала (волна 1) | 2025-07-21 → 2027-02-17 (+576d) | 2025-09-01 → 2027-03-30 (+575d) |  | -130d → 0d |  | constraint finish no later than 2025-09-01 → none |
| 23 | Доработки конфигурации (волна 1) | 2025-07-14 → 2027-03-31 (+625d) | 2025-09-01 → 2027-05-18 (+624d) |  | -130d → 0d | 20 → 22 | constraint finish no later than 2025-09-01 → none |
| 24 | Разработка интеграций | 2025-07-07 → 2027-05-19 (+681d) | 2025-09-01 → 2027-07-13 (+680d) |  | -130d → 0d | 20 → 23 | constraint finish no later than 2025-09-01 → none |
| 25 | Настройка и ведение НСИ | 2025-07-21 → 2027-02-17 (+576d) | 2025-09-01 → 2027-03-30 (+575d) |  | -30d → 235d |  | constraint finish no later than 2025-09-01 → none |
| 26 | Разработка сценариев миграции | 2025-07-28 → 2027-02-17 (+569d) | 2025-08-29 → 2027-03-23 (+571d) |  | -110d → 115d |  | constraint start no later than 2025-07-28 → none |
| 27 | Веха: функционал готов к тестированию | 2025-09-01 → 2027-07-13 (+680d) | 2025-09-01 → 2027-07-13 (+680d) |  | -130d → 0d |  |  |
| 28 | **Фаза 5. Тестирование** | 2025-08-04 → 2027-02-17 (+562d) | 2025-09-01 → 2027-09-21 (+750d) | 20d → 155d | -125d → 0d |  |  |
| 29 | Разработка ПМИ и тест-кейсов | 2025-08-11 → 2027-02-17 (+555d) | 2025-09-01 → 2027-03-09 (+554d) |  | -130d → 90d |  | constraint finish no later than 2025-09-01 → none |
| 30 | Функциональное тестирование | 2025-08-04 → 2027-07-14 (+709d) | 2025-09-01 → 2027-08-10 (+708d) |  | -110d → 0d |  | constraint finish no later than 2025-09-01 → none |
| 31 | Интеграционное тестирование | 2025-08-11 → 2027-08-11 (+730d) | 2025-09-01 → 2027-08-31 (+729d) |  | -110d → 0d | 27, 29 → 30 | constraint finish no later than 2025-09-01 → none |
| 32 | Нагрузочное тестирование | 2025-08-18 → 2027-09-01 (+744d) | 2025-09-01 → 2027-09-14 (+743d) |  | -95d → 5d | 30 → 31 | constraint finish no later than 2025-09-01 → none |
| 33 | Пробные миграции + сверка данных | 2025-08-11 → 2027-07-14 (+702d) | 2025-09-01 → 2027-08-03 (+701d) |  | -95d → 35d |  | constraint finish no later than 2025-09-01 → none |
| 34 | Исправление дефектов | 2025-08-11 → 2027-09-01 (+751d) | 2025-09-01 → 2027-09-21 (+750d) |  | -95d → 0d |  | constraint finish no later than 2025-09-01 → none |
| 35 | Веха: испытания пройдены | 2025-09-01 → 2027-09-21 (+750d) | 2025-09-01 → 2027-09-21 (+750d) |  | -95d → 0d |  |  |
| 36 | **Фаза 6. Обучение и опытная эксплуатация** | 2025-07-21 → 2027-07-14 (+723d) | 2025-09-01 → 2027-12-21 (+841d) | 30d → 115d | -80d → 0d |  |  |
| 37 | Подготовка учебных материалов | 2025-08-11 → 2027-07-14 (+702d) | 2025-09-01 → 2027-08-03 (+701d) |  | -95d → 35d |  | constraint finish no later than 2025-09-01 → none |
| 38 | Обучение пользователей | 2025-08-04 → 2027-09-22 (+779d) | 2025-09-01 → 2027-10-19 (+778d) |  | -75d → 0d |  | constraint finish no later than 2025-09-01 → none |
| 39 | Промышленная миграция данных | 2025-08-21 → 2027-09-22 (+762d) | 2025-09-01 → 2027-10-01 (+760d) | 7d → 8d | -75d → 12d |  | constraint finish no later than 2025-09-01 → none; resources Специалист по миграции данных; Архитектор данных / НСИ; Администратор системы → Специалист по миграции данных [93.8%]; Архитектор данных / НСИ [46.9%]; Администратор системы [28.1%] |
| 40 | Опытно-промышленная эксплуатация (ОПЭ) | 2025-07-21 → 2027-10-20 (+821d) | 2025-09-01 → 2027-11-30 (+820d) |  | -45d → 0d |  | constraint finish no later than 2025-09-01 → none |
| 41 | Доработки по итогам ОПЭ | 2025-08-11 → 2027-12-01 (+842d) | 2025-09-01 → 2027-12-21 (+841d) |  | -30d → 0d |  | constraint finish no later than 2025-09-01 → none |
| 42 | Веха: система готова к ПЭ | 2025-09-01 → 2027-12-21 (+841d) | 2025-09-01 → 2027-12-21 (+841d) |  | -30d → 0d |  |  |
| 43 | **Фаза 7. Промышленная эксплуатация и закрытие** | 2025-08-04 → 2027-12-22 (+870d) | 2025-09-01 → 2028-02-22 (+904d) | 20d → 45d | -10d → 0d |  |  |
| 44 | Перевод в промышленную эксплуатацию | 2025-08-25 → 2027-12-22 (+849d) | 2025-09-01 → 2027-12-28 (+848d) |  | -25d → 0d |  | constraint finish no later than 2025-09-01 → none |
| 45 | Стабилизация (Hypercare) | 2025-08-04 → 2027-12-29 (+877d) | 2025-09-01 → 2028-01-25 (+876d) |  | -20d → 0d |  | constraint finish no later than 2025-09-01 → none |
| 46 | Подготовка эксплуатационной документации | 2025-08-11 → 2028-01-26 (+898d) | 2025-09-01 → 2028-02-15 (+897d) |  | -15d → 0d | 42 → 45 | constraint finish no later than 2025-09-01 → none |
| 47 | Извлечённые уроки, закрытие проекта | 2025-08-25 → 2028-02-16 (+905d) | 2025-09-01 → 2028-02-22 (+904d) |  | -5d → 0d |  | constraint finish no later than 2025-09-01 → none |
| 48 | Веха: проект завершён | 2025-09-01 → 2028-02-22 (+904d) | 2025-09-01 → 2028-02-22 (+904d) |  | 232d → 0d |  |  |
